"Nombre";"Nivel";"Estado";"Inicio";"Fin";"Avance";"Responsable";"Unidad ejecutora";"Fase";"Tareas"
"MINEDU · Dotación 2027";"Proyecto";"En curso";"2026-09-04";"2027-07-30";"28";"Equipo del proyecto";"Todas las UGEL";"Proyecto";"12/42"
"I. Planificación de la distribución";"Proceso";"En curso";"2026-09-04";"2026-11-30";"67";"Equipo de planificación";"Regional";"Planificación";"11/18"
"1.6 Elaboración del Cuadro de Distribución Local en el MC SIGA";"Subproceso";"En proceso";"2026-10-12";"2026-11-30";"42";"Responsables de UGEL";"Junín";"Elaboración del CDL";"5/13"
"Fase 1 · Planificación y CDL preliminar";"Fase";"Cumple";"2026-10-12";"2026-10-30";"100";"Responsables de UGEL";"Junín";"Planificación";"4/4"
"Conformar comité UGEL";"Actividad";"Cumple";"2026-10-12";"2026-10-16";"100";"Esp. CDL Chupaca";"UGEL Chupaca";"Planificación";"2/2"
"Remitir CDL preliminar";"Actividad";"Cumple";"2026-10-16";"2026-10-20";"100";"Esp. CDL Concepción";"UGEL Concepción";"Planificación";"1/1"
"Validar modificaciones";"Actividad";"Cumple";"2026-10-20";"2026-10-30";"100";"Equipo de planificación";"UGEL Chupaca";"Planificación";"1/1"
"Fase 2 · Registro en MC SIGA (RAR / NEA)";"Fase";"En curso";"2026-11-02";"2026-11-20";"50";"Responsables de UGEL";"Junín";"Registro MC SIGA";"2/4"
"Cargar archivo RAR en MC SIGA";"Actividad";"Cumple";"2026-11-02";"2026-11-05";"100";"Esp. CDL Huancayo";"UGEL Huancayo";"Registro MC SIGA";"1/1"
"Registro de NEA";"Actividad";"En curso";"2026-11-06";"2026-11-15";"50";"María Jara";"UGEL Junín";"Registro MC SIGA";"1/3"
"Cargar archivo RAR";"Actividad";"Cumple";"2026-11-06";"2026-11-08";"100";"María Jara";"UGEL Junín";"Registro MC SIGA";"1/1"
"Validar registro sin inconsistencias";"Actividad";"Pendiente";"2026-11-09";"2026-11-12";"0";"María Jara";"UGEL Junín";"Registro MC SIGA";"0/1"
"Confirmar 100% de NEA registradas";"Actividad";"Pendiente";"2026-11-13";"2026-11-15";"0";"María Jara";"UGEL Junín";"Registro MC SIGA";"0/1"
"Revisión de inconsistencias";"Actividad";"Pendiente";"2026-11-16";"2026-11-20";"0";"Equipo de planificación";"UGEL Huancayo";"Registro MC SIGA";"0/2"
"Fase 3 · Validación DEI y Nivel Inicial";"Fase";"Pendiente";"2026-11-21";"2026-11-30";"0";"Responsables de UGEL";"Junín";"DEI";"0/3"
"Validación de matrícula";"Actividad";"Pendiente";"2026-11-21";"2026-11-24";"0";"Esp. CDL Satipo";"UGEL Satipo";"DEI";"0/1"
"Registro DEI en MC SIGA";"Actividad";"Pendiente";"2026-11-25";"2026-11-30";"0";"Esp. CDL Tarma";"UGEL Tarma";"DEI";"0/2"
"II. Gestión de almacenes y recepción RAR / NEA";"Proceso";"En curso";"2026-09-11";"2027-01-30";"67";"Equipo logístico";"Regional";"Gestión de almacenes";"7/11"
"Recepción y verificación de materiales";"Fase";"En proceso";"2026-11-10";"2027-01-15";"35";"Equipo logístico";"UGEL Chupaca";"Recepción";"2/6"
